# Fluxo - Sistema Bancario Digital

Schedule from MS Project XML, 2026-02-23 to 2026-12-03, status date 2026-08-24, 4 hours a day.
Checkpoint 1 - Grupo 1
UNIUBE - Projetos de Software II

## Calendars

- Fluxo - 32h semanais: Mon-Fri 19:00-23:00; Sat-Sun 14:00-20:00.

## Resources

| Resource | Group |
| --- | --- |
| Gabriel Henrique | Lider / Gerente de projeto |
| Joao Alfredo | Arquiteto / Backend |
| Harttur Oliveira Pimenta | BDA - Banco de Dados |
| Eduardo Henrique | Infraestrutura |
| Marcus Vinicius | Frontend / UX UI |
| Equipe | Grupo 1 - todos |

## Schedule

| ID | WBS | Task | Type | Duration | Start | Finish | Predecessors | Complete | Constraint | Resources | Work |
| --- | --- | --- | --- | --- | --- | --- | --- | --- | --- | --- | --- |
| 1 | 1 | **FLUXO - Sistema Bancario Digital** |  | 481.5d | 2026-02-23 | 2026-12-03 |  | 65% |  |  | 1926h |
| 2 | 1.1 | **FASE 0 - Fundamentacao e Concepcao** |  | 180d | 2026-02-23 | 2026-08-07 |  | 100% |  |  | 720h |
| 3 | 1.1.1 | Aula 01 - Conteudo programatico da disciplina |  | 2d | 2026-02-23 | 2026-02-24 |  | 100% | start no earlier than 2026-02-23 | Equipe | 8h |
| 4 | 1.1.2 | Formacao do grupo de trabalho |  | 3d | 2026-02-25 | 2026-02-27 | 3 | 100% | start no earlier than 2026-02-25 | Equipe | 12h |
| 5 | 1.1.3 | Aula 02 - Tecnicas de modelagem de sistemas OO |  | 3d | 2026-03-02 | 2026-03-04 | 4FS+3d | 100% | start no earlier than 2026-03-02 | Equipe | 12h |
| 6 | 1.1.4 | Brainstorming e selecao do tema do projeto |  | 6d | 2026-03-05 | 2026-03-09 | 5 | 100% | start no earlier than 2026-03-05 | Equipe | 24h |
| 7 | 1.1.5 | Pesquisa de mercado - bancos digitais (benchmark) |  | 7d | 2026-03-10 | 2026-03-15 | 6 | 100% | start no earlier than 2026-03-10 | Equipe | 28h |
| 8 | 1.1.6 | Definicao do tema: banco digital Fluxo |  | 2d | 2026-03-16 | 2026-03-17 | 7 | 100% | start no earlier than 2026-03-16 | Equipe | 8h |
| 9 | 1.1.7 | Estudo de arquitetura de software em camadas |  | 9d | 2026-03-18 | 2026-03-25 | 8 | 100% | start no earlier than 2026-03-18 | Joao Alfredo | 36h |
| 10 | 1.1.8 | Estudo dirigido - Laravel e PHP 8 |  | 23d | 2026-03-26 | 2026-04-14 | 9 | 100% | start no earlier than 2026-03-26 | Joao Alfredo | 92h |
| 11 | 1.1.9 | Estudo dirigido - Flutter e Dart |  | 23d | 2026-04-15 | 2026-05-04 | 9FS+23d | 100% | start no earlier than 2026-04-15 | Eduardo Henrique | 92h |
| 12 | 1.1.10 | Estudo dirigido - PostgreSQL e modelagem relacional |  | 17d | 2026-05-05 | 2026-05-19 | 10FS+23d | 100% | start no earlier than 2026-05-05 | Harttur Oliveira Pimenta | 68h |
| 13 | 1.1.11 | Estudo dirigido - Tailwind CSS e Blade |  | 14d | 2026-05-20 | 2026-05-31 | 10FS+40d | 100% | start no earlier than 2026-05-20 | Marcus Vinicius | 56h |
| 14 | 1.1.12 | Avaliacao institucional N1 |  | 11d | 2026-04-07 | 2026-04-16 |  | 100% | start no earlier than 2026-04-07 | Equipe | 44h |
| 15 | 1.1.13 | Avaliacao institucional N2 |  | 8d | 2026-06-17 | 2026-06-23 |  | 100% | start no earlier than 2026-06-17 | Equipe | 32h |
| 16 | 1.1.14 | Prova de conceito - integracao Laravel + Flutter |  | 14d | 2026-06-24 | 2026-07-05 | 15 | 100% | start no earlier than 2026-06-24 | Joao Alfredo | 56h |
| 17 | 1.1.15 | Definicao da stack tecnologica definitiva |  | 4d | 2026-07-06 | 2026-07-09 | 16 | 100% | start no earlier than 2026-07-06 | Equipe | 16h |
| 18 | 1.1.16 | Estudo de viabilidade de hospedagem (Render) |  | 6d | 2026-07-10 | 2026-07-14 | 17 | 100% | start no earlier than 2026-07-10 | Eduardo Henrique | 24h |
| 19 | 1.1.17 | Recesso academico |  | 23d | 2026-07-15 | 2026-08-03 | 18 | 100% | start no earlier than 2026-07-15 |  | 92h |
| 20 | 1.1.18 | Retomada - alinhamento do grupo e divisao de papeis |  | 3d | 2026-08-04 | 2026-08-06 | 19 | 100% | start no earlier than 2026-08-04 | Equipe | 12h |
| 21 | 1.1.19 | Criacao do repositorio no GitHub |  | 1d | 2026-08-07 | 2026-08-07 | 20 | 100% | start no earlier than 2026-08-07 | Eduardo Henrique | 4h |
| 22 | 1.1.20 | Concessao de acesso ao professor no repositorio |  | 1d | 2026-08-07 | 2026-08-07 | 21SS | 100% | start no earlier than 2026-08-07 | Gabriel Henrique | 4h |
| 23 | 1.2 | **CHECKPOINT 1 - Escopo, Requisitos e Casos de Uso** |  | 48d | 2026-08-18 | 2026-09-03 |  | 35% |  |  | 192h |
| 24 | 1.2.1 | 4.1 Definicao do escopo do projeto |  | 5.5d | 2026-08-18 | 2026-08-22 | 22FS+12d | 100% | start no earlier than 2026-08-18 | Equipe | 22h |
| 25 | 1.2.2 | Identificacao e analise de stakeholders |  | 3.5d | 2026-08-20 | 2026-08-22 | 24SS+2d | 100% | start no earlier than 2026-08-20 | Gabriel Henrique | 14h |
| 26 | 1.2.3 | 4.2 Levantamento de requisitos funcionais |  | 6d | 2026-08-21 | 2026-08-25 | 24SS+3d | 60% | start no earlier than 2026-08-21 | Equipe | 24h |
| 27 | 1.2.4 | 4.2 Levantamento de requisitos nao funcionais |  | 4.5d | 2026-08-23 | 2026-08-26 | 26SS+2.5d | 25% | start no earlier than 2026-08-23 | Equipe | 18h |
| 28 | 1.2.5 | Definicao das regras de negocio |  | 3d | 2026-08-25 | 2026-08-27 | 27SS+2.5d |  | start no earlier than 2026-08-25 | Joao Alfredo | 12h |
| 29 | 1.2.6 | 4.3 Diagrama de casos de uso 1 - Acesso e conta |  | 2d | 2026-08-26 | 2026-08-27 | 27SS+3.5d |  | start no earlier than 2026-08-26 | Equipe | 8h |
| 30 | 1.2.7 | 4.3 Diagrama de casos de uso 3 - Movimentacoes |  | 2d | 2026-08-27 | 2026-08-28 | 29SS+1d |  | start no earlier than 2026-08-27 | Equipe | 8h |
| 31 | 1.2.8 | 4.3 Diagrama de casos de uso 4 - Cartoes |  | 2.5d | 2026-08-28 | 2026-08-29 | 30SS+1d |  | start no earlier than 2026-08-28 | Equipe | 10h |
| 32 | 1.2.9 | 4.3 Diagrama de casos de uso 5 - Pagamentos |  | 3d | 2026-08-29 | 2026-08-30 | 31SS+1d |  | start no earlier than 2026-08-29 | Equipe | 12h |
| 33 | 1.2.10 | 4.3 Diagrama de casos de uso 7 - Administracao |  | 2.5d | 2026-08-30 | 2026-08-31 | 32SS+1.5d |  | start no earlier than 2026-08-30 | Equipe | 10h |
| 34 | 1.2.11 | Modelo de dados preliminar - 16 entidades |  | 4d | 2026-08-29 | 2026-08-31 | 28FS+1d |  | start no earlier than 2026-08-29 | Harttur Oliveira Pimenta | 16h |
| 35 | 1.2.12 | Definicao da estrutura monorepo (backend/mobile) |  | 2.5d | 2026-08-23 | 2026-08-24 | 22FS+17.5d | 50% | start no earlier than 2026-08-23 | Harttur Oliveira Pimenta | 10h |
| 36 | 1.2.13 | Configuracao do .gitignore do monorepo |  | 1d | 2026-08-24 | 2026-08-24 | 35SS+1.5d |  | start no earlier than 2026-08-24 | Harttur Oliveira Pimenta | 4h |
| 37 | 1.2.14 | 4.4 Quadro de gestao das atividades |  | 2d | 2026-08-31 | 2026-09-01 | 33SS+1.5d |  | start no earlier than 2026-08-31 | Gabriel Henrique | 8h |
| 38 | 1.2.15 | 4.4.2 Criacao do projeto no LibreProject |  | 2d | 2026-09-01 | 2026-09-02 | 37SS+1d |  | start no earlier than 2026-09-01 | Gabriel Henrique | 8h |
| 39 | 1.2.16 | Consolidacao do PDF unico do checkpoint 1 |  | 1d | 2026-09-02 | 2026-09-02 | 38SS+1d |  | start no earlier than 2026-09-02 | Gabriel Henrique | 4h |
| 40 | 1.2.17 | Entrega pelo diario de bordo |  | 1d | 2026-09-02 | 2026-09-02 | 39SS |  | start no earlier than 2026-09-02 | Gabriel Henrique | 4h |
| 41 | 1.2.18 | APRESENTACAO CHECKPOINT 1 | milestone | 0d | 2026-09-03 | 2026-09-03 | 40 |  | start no earlier than 2026-09-03 | Equipe |  |

| ID | WBS | Task | Type | Duration | Start | Finish | Predecessors | Constraint | Resources | Work |
| --- | --- | --- | --- | --- | --- | --- | --- | --- | --- | --- |
| 42 | 1.3 | **CHECKPOINT 2 - Modelagem e Prototipacao** |  | 56d | 2026-09-04 | 2026-09-18 |  |  |  | 224h |
| 43 | 1.3.1 | Setup do projeto Laravel no monorepo |  | 4d | 2026-09-04 | 2026-09-06 | 41 | start no earlier than 2026-09-04 | Joao Alfredo | 16h |
| 44 | 1.3.2 | Configuracao do PostgreSQL local (Docker) |  | 2.5d | 2026-09-04 | 2026-09-05 | 41 | start no earlier than 2026-09-04 | Harttur Oliveira Pimenta | 10h |
| 45 | 1.3.3 | Setup do projeto Flutter no monorepo |  | 4d | 2026-09-05 | 2026-09-07 | 41FS+1d | start no earlier than 2026-09-05 | Eduardo Henrique | 16h |
| 46 | 1.3.4 | 4.2 Consolidacao dos requisitos finais |  | 4.5d | 2026-09-06 | 2026-09-09 | 41FS+2.5d | start no earlier than 2026-09-06 | Equipe | 18h |
| 47 | 1.3.5 | 4.5 Prototipacao de telas no Figma - fluxos do cliente |  | 6.5d | 2026-09-07 | 2026-09-12 | 46SS+1.5d | start no earlier than 2026-09-07 | Marcus Vinicius | 26h |
| 48 | 1.3.6 | 4.5 Prototipacao de telas no Figma - area administrativa |  | 4.5d | 2026-09-13 | 2026-09-16 | 47 | start no earlier than 2026-09-13 | Marcus Vinicius | 18h |
| 49 | 1.3.7 | 4.6 Documentos detalhados dos casos de uso |  | 5.5d | 2026-09-08 | 2026-09-12 | 46SS+2.5d | start no earlier than 2026-09-08 | Gabriel Henrique | 22h |
| 50 | 1.3.8 | 4.7 Diagrama de dados (DER) |  | 4.5d | 2026-09-09 | 2026-09-12 | 44FS+3.5d | start no earlier than 2026-09-09 | Harttur Oliveira Pimenta | 18h |
| 51 | 1.3.9 | 4.8 Diagrama de classes do modelo de dados |  | 4d | 2026-09-15 | 2026-09-18 | 50FS+2.5d | start no earlier than 2026-09-15 | Harttur Oliveira Pimenta | 16h |
| 52 | 1.3.10 | Migrations iniciais - usuarios, clientes, contas |  | 5d | 2026-09-11 | 2026-09-14 | 50SS+2d | start no earlier than 2026-09-11 | Harttur Oliveira Pimenta | 20h |
| 53 | 1.3.11 | Implementacao da autenticacao (Laravel Sanctum) |  | 4.5d | 2026-09-13 | 2026-09-16 | 52SS+2.5d | start no earlier than 2026-09-13 | Joao Alfredo | 18h |
| 54 | 1.3.12 | Layout base em Blade + Tailwind CSS |  | 4.5d | 2026-09-13 | 2026-09-16 | 48SS | start no earlier than 2026-09-13 | Marcus Vinicius | 18h |
| 55 | 1.3.13 | Atualizacao do LibreProject |  | 1d | 2026-09-15 | 2026-09-15 | 51SS | start no earlier than 2026-09-15 | Gabriel Henrique | 4h |
| 56 | 1.3.14 | Consolidacao do PDF unico do checkpoint 2 |  | 1d | 2026-09-16 | 2026-09-16 | 55 | start no earlier than 2026-09-16 | Gabriel Henrique | 4h |
| 57 | 1.3.15 | APRESENTACAO CHECKPOINT 2 | milestone | 0d | 2026-09-17 | 2026-09-17 | 56 | start no earlier than 2026-09-17 | Equipe |  |
| 58 | 1.4 | **CHECKPOINT 3 - Backend REST com TDD** |  | 68d | 2026-09-18 | 2026-10-23 |  |  |  | 272h |
| 59 | 1.4.1 | Definicao da estrategia de testes (TDD) |  | 4d | 2026-09-18 | 2026-09-20 | 57 | start no earlier than 2026-09-18 | Joao Alfredo | 16h |
| 60 | 1.4.2 | Motor transacional - partidas dobradas (TDD) |  | 11d | 2026-09-21 | 2026-09-30 | 59 | start no earlier than 2026-09-21 | Joao Alfredo | 44h |
| 61 | 1.4.3 | API REST - contas, saldo e extrato (TDD) |  | 9d | 2026-10-01 | 2026-10-08 | 60 | start no earlier than 2026-10-01 | Joao Alfredo | 36h |
| 62 | 1.4.4 | API REST - chaves Pix e transferencias (TDD) |  | 9d | 2026-10-09 | 2026-10-16 | 61 | start no earlier than 2026-10-09 | Joao Alfredo | 36h |
| 63 | 1.4.5 | API REST - pagamentos, boletos e QR Code (TDD) |  | 8d | 2026-10-17 | 2026-10-23 | 61FS+9d | start no earlier than 2026-10-17 | Harttur Oliveira Pimenta | 32h |
| 64 | 1.4.6 | Motor antifraude por regras de risco |  | 4.5d | 2026-10-14 | 2026-10-17 | 62SS+6d | start no earlier than 2026-10-14 | Eduardo Henrique | 18h |
| 65 | 1.4.7 | Trilha de auditoria imutavel |  | 3.5d | 2026-10-15 | 2026-10-17 | 63SS | start no earlier than 2026-10-15 | Harttur Oliveira Pimenta | 14h |
| 66 | 1.4.8 | Documentacao da API em OpenAPI/Swagger |  | 4d | 2026-10-17 | 2026-10-19 | 64SS+3d | start no earlier than 2026-10-17 | Gabriel Henrique | 16h |
| 67 | 1.4.9 | Deploy do backend no Render |  | 3.5d | 2026-10-18 | 2026-10-20 | 65 | start no earlier than 2026-10-18 | Eduardo Henrique | 14h |
| 68 | 1.4.10 | Provisionamento do PostgreSQL no Render |  | 2.5d | 2026-10-18 | 2026-10-19 | 65 | start no earlier than 2026-10-18 | Eduardo Henrique | 10h |
| 69 | 1.4.11 | 4.9 Diagramas de classes das interacoes |  | 5d | 2026-10-17 | 2026-10-20 | 64SS+3d | start no earlier than 2026-10-17 | Joao Alfredo | 20h |
| 70 | 1.4.12 | Testes de integracao da API publicada |  | 2d | 2026-10-20 | 2026-10-21 | 67SS+2.5d | start no earlier than 2026-10-20 | Eduardo Henrique | 8h |
| 71 | 1.4.13 | Atualizacao do LibreProject |  | 1d | 2026-10-20 | 2026-10-20 | 69SS+4d | start no earlier than 2026-10-20 | Gabriel Henrique | 4h |
| 72 | 1.4.14 | Consolidacao do PDF unico do checkpoint 3 |  | 1d | 2026-10-21 | 2026-10-21 | 71 | start no earlier than 2026-10-21 | Gabriel Henrique | 4h |
| 73 | 1.4.15 | APRESENTACAO CHECKPOINT 3 | milestone | 0d | 2026-10-22 | 2026-10-22 | 72 | start no earlier than 2026-10-22 | Equipe |  |

| ID | WBS | Task | Type | Duration | Start | Finish | Predecessors | Constraint | Resources | Work |
| --- | --- | --- | --- | --- | --- | --- | --- | --- | --- | --- |
| 74 | 1.5 | **CHECKPOINT 4 - Frontend Web, Mobile e Entrega Final** |  | 129.5d | 2026-10-23 | 2026-12-03 |  |  |  | 518h |
| 75 | 1.5.1 | Portal do cliente web - autenticacao e dashboard |  | 9d | 2026-10-23 | 2026-10-30 | 73 | start no earlier than 2026-10-23 | Marcus Vinicius | 36h |
| 76 | 1.5.2 | Portal do cliente web - extrato e transferencias |  | 9.5d | 2026-10-31 | 2026-11-07 | 75 | start no earlier than 2026-10-31 | Marcus Vinicius | 38h |
| 77 | 1.5.3 | Portal do cliente web - cartoes e pagamentos |  | 8d | 2026-11-08 | 2026-11-14 | 76 | start no earlier than 2026-11-08 | Marcus Vinicius | 32h |
| 78 | 1.5.4 | Portal administrativo web - usuarios e perfis |  | 6.5d | 2026-11-15 | 2026-11-20 | 77 | start no earlier than 2026-11-15 | Marcus Vinicius | 26h |
| 79 | 1.5.5 | Portal administrativo web - auditoria e relatorios |  | 6d | 2026-11-21 | 2026-11-25 | 78 | start no earlier than 2026-11-21 | Marcus Vinicius | 24h |
| 80 | 1.5.6 | App Flutter - login e autenticacao com a API |  | 9d | 2026-10-23 | 2026-10-30 | 73 | start no earlier than 2026-10-23 | Eduardo Henrique | 36h |
| 81 | 1.5.7 | App Flutter - dashboard, saldo e extrato |  | 11d | 2026-10-31 | 2026-11-08 | 80 | start no earlier than 2026-10-31 | Eduardo Henrique | 44h |
| 82 | 1.5.8 | App Flutter - transferencias Pix |  | 9d | 2026-11-09 | 2026-11-16 | 81 | start no earlier than 2026-11-09 | Eduardo Henrique | 36h |
| 83 | 1.5.9 | App Flutter - cartoes e pagamentos |  | 9d | 2026-11-17 | 2026-11-24 | 82 | start no earlier than 2026-11-17 | Eduardo Henrique | 36h |
| 84 | 1.5.10 | Modulo de cartoes e faturas no backend |  | 11.5d | 2026-11-01 | 2026-11-10 | 73FS+10.5d | start no earlier than 2026-11-01 | Joao Alfredo | 46h |
| 85 | 1.5.11 | Modulo de suporte e chamados |  | 7d | 2026-11-11 | 2026-11-16 | 84 | start no earlier than 2026-11-11 | Joao Alfredo | 28h |
| 86 | 1.5.12 | Relatorios gerenciais |  | 5.5d | 2026-11-17 | 2026-11-21 | 85 | start no earlier than 2026-11-17 | Harttur Oliveira Pimenta | 22h |
| 87 | 1.5.13 | Testes de integracao ponta a ponta |  | 6.5d | 2026-11-22 | 2026-11-27 | 83SS+5.5d | start no earlier than 2026-11-22 | Harttur Oliveira Pimenta | 26h |
| 88 | 1.5.14 | Correcao de defeitos identificados |  | 6d | 2026-11-26 | 2026-11-30 | 87SS+4.5d | start no earlier than 2026-11-26 | Equipe | 24h |
| 89 | 1.5.15 | 5.3 Elaboracao do manual do usuario |  | 9d | 2026-11-20 | 2026-11-27 | 83SS+3d | start no earlier than 2026-11-20 | Gabriel Henrique | 36h |
| 90 | 1.5.16 | Build do APK e disponibilizacao para download |  | 2d | 2026-11-30 | 2026-12-01 | 88SS+5d | start no earlier than 2026-11-30 | Eduardo Henrique | 8h |
| 91 | 1.5.17 | Deploy final e testes em producao |  | 2d | 2026-12-01 | 2026-12-02 | 88 | start no earlier than 2026-12-01 | Eduardo Henrique | 8h |
| 92 | 1.5.18 | 5.4 Atualizacao final do LibreProject |  | 1d | 2026-12-01 | 2026-12-01 | 91SS | start no earlier than 2026-12-01 | Gabriel Henrique | 4h |
| 93 | 1.5.19 | 5.5 Commit final com todo o codigo |  | 1d | 2026-12-02 | 2026-12-02 | 92 | start no earlier than 2026-12-02 | Equipe | 4h |
| 94 | 1.5.20 | Consolidacao do PDF unico final |  | 1d | 2026-12-02 | 2026-12-02 | 93SS | start no earlier than 2026-12-02 | Gabriel Henrique | 4h |
| 95 | 1.5.21 | APRESENTACAO CHECKPOINT 4 - ENTREGA FINAL | milestone | 0d | 2026-12-03 | 2026-12-03 | 94 | start no earlier than 2026-12-03 | Equipe |  |
